# Decor Marketing Application

Schedule from MS Project, 2007-08-22 to 2023-11-14.

## Calendars

- Standard: Mon-Fri 08:00-12:00, 13:00-17:00; Sat-Sun off.

## Schedule

| ID | WBS | Task | Duration | Start | Finish | Predecessors | Total slack | Free slack | Work |
| --- | --- | --- | --- | --- | --- | --- | --- | --- | --- |
| 1 | 1 | **Solr: E-Commerce Search Provider Implementation** | 3374.5d | 2010-12-08 08:00 | 2023-11-14 12:00 |  |  |  | 256h |
| 2 | 1.1 | **Discovery** | 4.75d | 2010-12-08 08:00 | 2010-12-14 15:00 |  | -870d | 0d | 46h |
| 3 | 1.1.1 | **Servlet / Webserver Proof-of-Concept** | 0.5d | 2010-12-08 08:00 | 2010-12-08 12:00 |  | -870d | 0d | 8h |
| 4 | 1.1.1.1 | Install and Configure Jetty | 4h | 2010-12-08 08:00 | 2010-12-08 12:00 |  | -870d | 0d | 4h |
| 5 | 1.1.1.2 | Install and Configure Tomcat | 4h | 2010-12-08 08:00 | 2010-12-08 12:00 |  | -870d | 0d | 4h |
| 6 | 1.1.2 | **Solr Server Proof-of-Concept** | 4h | 2010-12-08 08:00 | 2010-12-08 12:00 |  | -870d | 0d | 4h |
| 7 | 1.1.2.1 | Installation | 1h | 2010-12-08 08:00 | 2010-12-08 09:00 |  | -870d | 0d | 1h |
| 8 | 1.1.2.2 | Replication Configuration | 3h | 2010-12-08 09:00 | 2010-12-08 12:00 | 7 | -870d | 0d | 3h |
| 9 | 1.1.3 | **Solr Client Proof-of-Concept** | 4.25d | 2010-12-08 13:00 | 2010-12-14 15:00 | 3, 6 | -870d | 0d | 34h |
| 10 | 1.1.3.1 | Familiarization with the SolrNet Library | 2h | 2010-12-08 13:00 | 2010-12-08 15:00 |  | -870d | 0d | 2h |
| 11 | 1.1.3.2 | Tweaking of Solr Configuration | 4h | 2010-12-08 15:00 | 2010-12-09 10:00 | 10 | -870d | 0d | 4h |
| 12 | 1.1.3.3 | Solr Product Schema Testing | 4h | 2010-12-09 10:00 | 2010-12-09 15:00 | 11 | -870d | 0d | 4h |
| 13 | 1.1.3.4 | Solr Query Testing | 12h | 2010-12-09 15:00 | 2010-12-13 10:00 | 12 | -870d | 0d | 12h |
| 14 | 1.1.3.5 | Solr Product Import Testing | 12h | 2010-12-13 10:00 | 2010-12-14 15:00 | 13 | -870d | 0d | 12h |
| 15 | 1.2 | **Solr Environment** | 0.94d | 2010-12-14 15:00 | 2010-12-15 14:30 | 2 | -870d | 0d | 14.5h |
| 16 | 1.2.1 | **Installation** | 0.94d | 2010-12-14 15:00 | 2010-12-15 14:30 |  | -870d | 0d | 14.5h |
| 17 | 1.2.1.1 | **Development** | 0.38d | 2010-12-14 15:00 | 2010-12-15 09:00 |  | -870d | 0d | 3h |
| 18 | 1.2.1.1.1 | Java Development Kit (JDK) - both 32 and 64-bit versions | 0.5h | 2010-12-14 15:00 | 2010-12-14 15:30 |  | -870d | 0d | 0.5h |
| 19 | 1.2.1.1.2 | Java Runtime Environment (JRE) - both 32 and 64-bit versions | 0.5h | 2010-12-14 15:30 | 2010-12-14 16:00 | 18 | -870d | 0d | 0.5h |
| 20 | 1.2.1.1.3 | Servlet Container / Web Server Stack | 1h | 2010-12-14 16:00 | 2010-12-14 17:00 | 19 | -870d | 0d | 1h |
| 21 | 1.2.1.1.4 | Install Solr | 1h | 2010-12-15 08:00 | 2010-12-15 09:00 | 20 | -870d | 0d | 1h |
| 22 | 1.2.1.2 | **Acceptance** | 0.25d | 2010-12-15 09:00 | 2010-12-15 11:00 |  | 3369.12d |  | 2.5h |
| 23 | 1.2.1.2.1 | Java Development Kit (JDK) - both 32 and 64-bit versions | 0.5h | 2010-12-15 09:00 | 2010-12-15 09:30 | 17 | 3369.12d | 0d | 0.5h |
| 24 | 1.2.1.2.2 | Java Runtime Environment (JRE) - both 32 and 64-bit versions | 0.5h | 2010-12-15 09:30 | 2010-12-15 10:00 | 23 | 3369.12d | 0d | 0.5h |
| 25 | 1.2.1.2.3 | Servlet Container / Web Server Stack | 0.5h | 2010-12-15 10:00 | 2010-12-15 10:30 | 24 | 3369.12d | 0d | 1h |
| 26 | 1.2.1.2.4 | Install Solr | 0.5h | 2010-12-15 10:30 | 2010-12-15 11:00 | 25 | 3369.12d |  | 0.5h |

Notes:
- 3: ·This task is intended to provide the opportunity to make a decision as to the servlet container and web server to be employed as a host for the Solr instances. / ·There is an available Windows 2008 R2 server instance to use as a basis for testing.
- 6: ·This task is intended to expose any difficulties or unknowns with the installation and configuration with Solr, and to prove the approach of using Solr replication as the basis for allowing product data refreshes. / ·There is an available Windows 2008 R2 server instance to use as a basis for testing.
- 9: ·This task is intended to expose any difficulties or unknowns with the SolrNet client library as the primary conduit for interacting with Solr. / ·There is an available Solr instance to use as a basis for testing.
- 16: These tasks assume that the resource performing the installation has the following characteristics. The level of effort needed for these tasks may vary depending on the skill set of the assigned resource. / ·Moderate-to-good familiarity with the current server environment / ·Good familiarity with Windows Server instances / ·Good familiarity with the F5 load balancer and the current implementation / ·A reasonable understanding of the lessons learned in the discovery task outlined in this estimate. / It is assumed that the software needed is available from the discovery task. It is also assumed that the development environment will be used to vet the installation and configuration approach; the resulting tasks for production and acceptance should be a lower level of effort.
- 20: ·The chosen platform from the discovery task is used. / ·The default configuration for advanced hosting configuration are used. / ·Any configuration of the container for general use and environment considerations are included herein. / ·Any firewall configuration or other changes to the host machine OS are included herein.
- 22: These tasks will need to be performed once per machine in the environment. For the purposes of estimation, it is assumed that there are 2 machines being configured.
- 25: ·The chosen platform from the discovery task is used. / ·The default configuration for advanced hosting configuration are used. / ·Any configuration of the container for general use and environment considerations are included herein. / ·Any firewall configuration or other changes to the host machine OS are included herein.

| ID | WBS | Task | Type | Duration | Start | Finish | Predecessors | Total slack | Free slack | Work |
| --- | --- | --- | --- | --- | --- | --- | --- | --- | --- | --- |
| 27 | 1.2.1.3 | **Production** |  | 0.56d | 2010-12-15 09:00 | 2010-12-15 14:30 |  | 3368.81d |  | 9h |
| 28 | 1.2.1.3.1 | Java Development Kit (JDK) - both 32 and 64-bit versions |  | 1h | 2010-12-15 09:00 | 2010-12-15 10:00 | 17 | 3368.81d | 0d | 2.5h |
| 29 | 1.2.1.3.2 | Java Runtime Environment (JRE) - both 32 and 64-bit versions |  | 1h | 2010-12-15 10:00 | 2010-12-15 11:00 | 28 | 3368.81d | 0d | 2.5h |
| 30 | 1.2.1.3.3 | Servlet Container / Web Server Stack |  | 1h | 2010-12-15 11:00 | 2010-12-15 12:00 | 29 | 3368.81d | 0d | 2.5h |
| 31 | 1.2.1.3.4 | Install Solr |  | 1h | 2010-12-15 13:00 | 2010-12-15 14:00 | 30 | 3368.81d | 0d | 1h |
| 32 | 1.2.1.3.5 | Configure Load Balancing |  | 0.5h | 2010-12-15 14:00 | 2010-12-15 14:30 | 31 | 3368.81d |  | 0.5h |
| 33 | 1.3 | **Solr Configuration** |  | 2.12d | 2010-12-15 09:00 | 2010-12-17 10:00 | 17 | -870d | 0d | 18h |
| 34 | 1.3.1 | Base Engine Configuration |  | 1h | 2010-12-15 09:00 | 2010-12-15 10:00 |  | -870d | 0d | 1h |
| 35 | 1.3.2 | Query Listeners |  | 0.5h | 2010-12-15 10:00 | 2010-12-15 10:30 | 34 | -870d | 0d | 0.5h |
| 36 | 1.3.3 | Update Handlers |  | 0.5h | 2010-12-15 10:30 | 2010-12-15 11:00 | 35 | -870d | 0d | 0.5h |
| 37 | 1.3.4 | Caching |  | 0.5h | 2010-12-15 11:00 | 2010-12-15 11:30 | 36 | -870d | 0d | 0.5h |
| 38 | 1.3.5 | Spelling Plug-In |  | 0.5h | 2010-12-15 11:30 | 2010-12-15 12:00 | 37 | -870d | 0d | 0.5h |
| 39 | 1.3.6 | Replication |  | 2h | 2010-12-15 13:00 | 2010-12-15 15:00 | 38 | -870d | 0d | 2h |
| 40 | 1.3.7 | Document Schema |  | 6h | 2010-12-15 15:00 | 2010-12-16 12:00 | 39 | -870d | 0d | 6h |
| 41 | 1.3.8 | Validation of Solr Instance |  | 2h | 2010-12-16 13:00 | 2010-12-16 15:00 | 40 | -870d | 0d | 2h |
| 42 | 1.3.9 | Configuration Tuning (iterative) |  | 4h | 2010-12-16 15:00 | 2010-12-17 10:00 | 41 | -870d | 0d | 4h |
| 43 | 1.3.10 | Copy Configuration To Acceptance/Production |  | 1h | 2010-12-15 09:00 | 2010-12-15 10:00 | 18 | -868d | 0d | 1h |
| 44 | 1.4 | **Redirection Data Support** |  | 0.75d | 2010-12-17 10:00 | 2010-12-17 17:00 | 33, 17 | -870d | 0d | 6h |
| 45 | 1.4.1 | Architecture & Design |  | 1h | 2010-12-17 10:00 | 2010-12-17 11:00 |  | -870d | 0d | 1h |
| 46 | 1.4.2 | Database Implementation |  | 1h | 2010-12-17 11:00 | 2010-12-17 12:00 | 45 | -870d | 0d | 1h |
| 47 | 1.4.3 | Implementation |  | 2h | 2010-12-17 13:00 | 2010-12-17 15:00 | 46 | -870d | 0d | 2h |
| 48 | 1.4.4 | Integration into Platform Data Access Library |  | 1h | 2010-12-17 15:00 | 2010-12-17 16:00 | 47 | -870d | 0d | 1h |
| 49 | 1.4.5 | Code Review | milestone | 0h | 2010-12-17 16:00 | 2010-12-17 16:00 | 48 | -870d | 0d |  |
| 50 | 1.4.6 | Unit Testing |  | 1h | 2010-12-17 16:00 | 2010-12-17 17:00 | 49 | -870d | 0d | 1h |
| 51 | 1.4.7 | Integration Testing | milestone | 0h | 2010-12-17 17:00 | 2010-12-17 17:00 | 50 | -870d | 0d |  |
| 52 | 1.4.8 | QA / Bug Fixes | milestone | 0h | 2010-12-17 17:00 | 2010-12-17 17:00 | 51 | -870d | 0d |  |

Notes:
- 27: These tasks will need to be performed once per machine in the environment. For the purposes of estimation, it is assumed that there are 5 machines being configured.
- 30: ·The chosen platform from the discovery task is used. / ·The default configuration for advanced hosting configuration are used. / ·Any configuration of the container for general use and environment considerations are included herein. / ·Any firewall configuration or other changes to the host machine OS are included herein.
- 33: The Solr configuration is performed via editing of XML files. It is assumed that the same configuration is valid for all environments. As such, the configuration will be performed in the development environment and copied to the appropriate directory in the acceptance and production environments.
- 40: The document schema defines the information to be held in Solr and the rules to apply to it for searching. In the intended implementation, this schema will contain both product and redirection information
- 41: This task is intended to cover the use of the default Solr browse and administration screens to verify functionality and base configuration.
- 42: This task will be performed iteratively during the initial development and testing and is intended to cover the miscellaneous tweaks needed to the various configuration options and performance tuning.

| ID | WBS | Task | Type | Duration | Start | Finish | Predecessors | Total slack | Free slack | Work |
| --- | --- | --- | --- | --- | --- | --- | --- | --- | --- | --- |
| 53 | 1.5 | **Search Provider Library** |  | 1127.75d | 2011-12-01 08:00 | 2016-03-28 15:00 | 44, 33, 17 |  |  | 128.5h |
| 54 | 1.5.1 | **Common Infrastructure** |  | 0.25d | 2011-12-01 08:00 | 2011-12-01 10:00 |  | 1127.5d |  | 2h |
| 55 | 1.5.1.1 | Architecture & Design |  | 0.5h | 2011-12-01 08:00 | 2011-12-01 08:30 |  | 1127.5d | 0d | 0.5h |
| 56 | 1.5.1.2 | Database Implementation | milestone | 0h | 2011-12-01 08:30 | 2011-12-01 08:30 | 55 | 1127.5d | 0d |  |
| 57 | 1.5.1.3 | Implementation |  | 1h | 2011-12-01 08:30 | 2011-12-01 09:30 | 56 | 1127.5d | 0d | 1h |
| 58 | 1.5.1.4 | Code Review | milestone | 0h | 2011-12-01 09:30 | 2011-12-01 09:30 | 57 | 1127.5d | 0d |  |
| 59 | 1.5.1.5 | Unit Testing |  | 0.5h | 2011-12-01 09:30 | 2011-12-01 10:00 | 58 | 1127.5d | 0d | 0.5h |
| 60 | 1.5.1.6 | Integration Testing | milestone | 0h | 2011-12-01 10:00 | 2011-12-01 10:00 | 59 | 1127.5d | 0d |  |
| 61 | 1.5.1.7 | QA / Bug Fixes | milestone | 0h | 2011-12-01 10:00 | 2011-12-01 10:00 | 60 | 1127.5d |  |  |
| 62 | 1.5.2 | **Solr Infrastructure** |  | 3.75d | 2011-12-01 08:00 | 2011-12-06 15:00 |  | 1124d |  | 77.5h |
| 63 | 1.5.2.1 | **Configuration** |  | 0.25d | 2011-12-01 08:00 | 2011-12-01 10:00 |  | 1127.5d |  | 2h |
| 64 | 1.5.2.1.1 | Architecture & Design |  | 0.5h | 2011-12-01 08:00 | 2011-12-01 08:30 |  | 1127.5d | 0d | 0.5h |
| 65 | 1.5.2.1.2 | Database Implementation | milestone | 0h | 2011-12-01 08:30 | 2011-12-01 08:30 | 64 | 1127.5d | 0d |  |
| 66 | 1.5.2.1.3 | Implementation |  | 1h | 2011-12-01 08:30 | 2011-12-01 09:30 | 65 | 1127.5d | 0d | 1h |
| 67 | 1.5.2.1.4 | Code Review | milestone | 0h | 2011-12-01 09:30 | 2011-12-01 09:30 | 66 | 1127.5d | 0d |  |
| 68 | 1.5.2.1.5 | Unit Testing | milestone | 0h | 2011-12-01 09:30 | 2011-12-01 09:30 | 67 | 1127.5d | 0d |  |
| 69 | 1.5.2.1.6 | Integration Testing |  | 0.5h | 2011-12-01 09:30 | 2011-12-01 10:00 | 68 | 1127.5d | 0d | 0.5h |
| 70 | 1.5.2.1.7 | QA / Bug Fixes | milestone | 0h | 2011-12-01 10:00 | 2011-12-01 10:00 | 69 | 1127.5d |  |  |
| 71 | 1.5.2.2 | **Model Objects** |  | 1.5d | 2011-12-01 08:00 | 2011-12-02 12:00 |  | 1126.25d |  | 12h |
| 72 | 1.5.2.2.1 | Architecture & Design |  | 2h | 2011-12-01 08:00 | 2011-12-01 10:00 |  | 1126.25d | 0d | 2h |
| 73 | 1.5.2.2.2 | Database Implementation | milestone | 0h | 2011-12-01 10:00 | 2011-12-01 10:00 | 72 | 1126.25d | 0d |  |
| 74 | 1.5.2.2.3 | Implementation |  | 8h | 2011-12-01 10:00 | 2011-12-02 10:00 | 73 | 1126.25d | 0d | 8h |
| 75 | 1.5.2.2.4 | Code Review | milestone | 0h | 2011-12-02 10:00 | 2011-12-02 10:00 | 74 | 1126.25d | 0d |  |
| 76 | 1.5.2.2.5 | Unit Testing |  | 2h | 2011-12-02 10:00 | 2011-12-02 12:00 | 75 | 1126.25d | 0d | 2h |
| 77 | 1.5.2.2.6 | Integration Testing | milestone | 0h | 2011-12-02 12:00 | 2011-12-02 12:00 | 76 | 1126.25d | 0d |  |
| 78 | 1.5.2.2.7 | QA / Bug Fixes | milestone | 0h | 2011-12-02 12:00 | 2011-12-02 12:00 | 77 | 1126.25d |  |  |

Notes:
- 53: The level of effort associated with this task assumes that the development resource has a strong grasp on the basic implementation of the Endeca and/or Google Commerce Search providers or is receiving ongoing support from a knowledge expert in that area.
- 54: This task includes the infrastructure common to artifacts, including lightweight abstractions for - / ·Logging / ·Url Rewriting / ·Category Information / ·Cache Management
- 71: Includes annotation for Solr mappings and integration with SolrNet.

| ID | WBS | Task | Type | Duration | Start | Finish | Predecessors | Total slack | Free slack | Work |
| --- | --- | --- | --- | --- | --- | --- | --- | --- | --- | --- |
| 79 | 1.5.2.3 | **Product Queries** |  | 3.75d | 2011-12-01 08:00 | 2011-12-06 15:00 |  | 1124d |  | 30h |
| 80 | 1.5.2.3.1 | Architecture & Design |  | 2h | 2011-12-01 08:00 | 2011-12-01 10:00 |  | 1124d | 0d | 2h |
| 81 | 1.5.2.3.2 | Database Implementation | milestone | 0h | 2011-12-01 10:00 | 2011-12-01 10:00 | 80 | 1124d | 0d |  |
| 82 | 1.5.2.3.3 | Implementation |  | 24h | 2011-12-01 10:00 | 2011-12-06 10:00 | 81 | 1124d | 0d | 24h |
| 83 | 1.5.2.3.4 | Code Review | milestone | 0h | 2011-12-06 10:00 | 2011-12-06 10:00 | 82 | 1124d | 0d |  |
| 84 | 1.5.2.3.5 | Unit Testing |  | 4h | 2011-12-06 10:00 | 2011-12-06 15:00 | 83 | 1124d | 0d | 4h |
| 85 | 1.5.2.3.6 | Integration Testing | milestone | 0h | 2011-12-06 15:00 | 2011-12-06 15:00 | 84 | 1124d | 0d |  |
| 86 | 1.5.2.3.7 | QA / Bug Fixes | milestone | 0h | 2011-12-06 15:00 | 2011-12-06 15:00 | 85 | 1124d |  |  |
| 87 | 1.5.2.4 | **Product Upload** |  | 3.75d | 2011-12-01 08:00 | 2011-12-06 15:00 |  | 1124d |  | 30h |
| 88 | 1.5.2.4.1 | Architecture & Design |  | 2h | 2011-12-01 08:00 | 2011-12-01 10:00 |  | 1124d | 0d | 2h |
| 89 | 1.5.2.4.2 | Database Implementation | milestone | 0h | 2011-12-01 10:00 | 2011-12-01 10:00 | 88 | 1124d | 0d |  |
| 90 | 1.5.2.4.3 | Implementation |  | 24h | 2011-12-01 10:00 | 2011-12-06 10:00 | 89 | 1124d | 0d | 24h |
| 91 | 1.5.2.4.4 | Code Review | milestone | 0h | 2011-12-06 10:00 | 2011-12-06 10:00 | 90 | 1124d | 0d |  |
| 92 | 1.5.2.4.5 | Unit Testing |  | 4h | 2011-12-06 10:00 | 2011-12-06 15:00 | 91 | 1124d | 0d | 4h |
| 93 | 1.5.2.4.6 | Integration Testing | milestone | 0h | 2011-12-06 15:00 | 2011-12-06 15:00 | 92 | 1124d | 0d |  |
| 94 | 1.5.2.4.7 | QA / Bug Fixes | milestone | 0h | 2011-12-06 15:00 | 2011-12-06 15:00 | 93 | 1124d |  |  |
| 95 | 1.5.2.5 | **Redirection** |  | 0.44d | 2011-12-01 08:00 | 2011-12-01 11:30 |  | 1127.31d |  | 3.5h |
| 96 | 1.5.2.5.1 | Architecture & Design |  | 0.5h | 2011-12-01 08:00 | 2011-12-01 08:30 |  | 1127.31d | 0d | 0.5h |
| 97 | 1.5.2.5.2 | Database Implementation | milestone | 0h | 2011-12-01 08:30 | 2011-12-01 08:30 | 96 | 1127.31d | 0d |  |
| 98 | 1.5.2.5.3 | Implementation |  | 2h | 2011-12-01 08:30 | 2011-12-01 10:30 | 97 | 1127.31d | 0d | 2h |
| 99 | 1.5.2.5.4 | Code Review | milestone | 0h | 2011-12-01 10:30 | 2011-12-01 10:30 | 98 | 1127.31d | 0d |  |
| 100 | 1.5.2.5.5 | Unit Testing |  | 1h | 2011-12-01 10:30 | 2011-12-01 11:30 | 99 | 1127.31d | 0d | 1h |
| 101 | 1.5.2.5.6 | Integration Testing | milestone | 0h | 2011-12-01 11:30 | 2011-12-01 11:30 | 100 | 1127.31d | 0d |  |
| 102 | 1.5.2.5.7 | QA / Bug Fixes | milestone | 0h | 2011-12-01 11:30 | 2011-12-01 11:30 | 101 | 1127.31d |  |  |

Notes:
- 79: Includes integration with SolrNet and creation of a simplified API for common query operations.
- 87: Integrates with SolrNet as makes sense; due to bulk operations it may be a raw set of POST operations.

| ID | WBS | Task | Type | Duration | Start | Finish | Predecessors | Total slack | Free slack | Work |
| --- | --- | --- | --- | --- | --- | --- | --- | --- | --- | --- |
| 103 | 1.5.3 | **Provider Implementation** |  | 2.5d | 2011-12-01 08:00 | 2011-12-05 12:00 |  |  |  | 49h |
| 104 | 1.5.3.1 | **Search Provider** |  | 0h | 2007-08-22 08:00 | 2007-08-22 08:00 |  |  |  | 5h |
| 105 | 1.5.3.1.1 | Architecture & Design |  | 1h | 2007-08-22 08:00 | 2007-08-22 09:00 |  | -0.62d | 0d | 1h |
| 106 | 1.5.3.1.2 | Database Implementation | milestone | 0h | 2007-08-22 09:00 | 2007-08-22 09:00 | 105 | -0.62d | 0d |  |
| 107 | 1.5.3.1.3 | Implementation |  | 2h | 2007-08-22 09:00 | 2007-08-22 11:00 | 106 | -0.62d | 0d | 2h |
| 108 | 1.5.3.1.4 | Code Review | milestone | 0h | 2007-08-22 11:00 | 2007-08-22 11:00 | 107 | -0.62d | 0d |  |
| 109 | 1.5.3.1.5 | Unit Testing |  | 1h | 2007-08-22 11:00 | 2007-08-22 12:00 | 108 | -0.62d | 0d | 1h |
| 110 | 1.5.3.1.6 | Integration Testing |  | 1h | 2007-08-22 13:00 | 2007-08-22 14:00 | 109 | -0.62d | 0d | 1h |
| 111 | 1.5.3.1.7 | QA / Bug Fixes | milestone | 0h | 2007-08-22 14:00 | 2007-08-22 14:00 | 110 | -0.62d | 0d |  |
| 112 | 1.5.3.2 | **Search Filter Provider** |  | 0h | 2007-08-22 10:00 | 2007-08-22 10:00 |  |  |  | 5h |
| 113 | 1.5.3.2.1 | Architecture & Design |  | 1h | 2007-08-22 10:00 | 2007-08-22 11:00 |  | -0.62d | 0d | 1h |
| 114 | 1.5.3.2.2 | Database Implementation | milestone | 0h | 2007-08-22 11:00 | 2007-08-22 11:00 | 113 | -0.62d | 0d |  |
| 115 | 1.5.3.2.3 | Implementation |  | 2h | 2007-08-22 11:00 | 2007-08-22 14:00 | 114 | -0.62d | 0d | 2h |
| 116 | 1.5.3.2.4 | Code Review | milestone | 0h | 2007-08-22 14:00 | 2007-08-22 14:00 | 115 | -0.62d | 0d |  |
| 117 | 1.5.3.2.5 | Unit Testing |  | 1h | 2007-08-22 14:00 | 2007-08-22 15:00 | 116 | -0.62d | 0d | 1h |
| 118 | 1.5.3.2.6 | Integration Testing |  | 1h | 2007-08-22 15:00 | 2007-08-22 16:00 | 117 | -0.62d | 0d | 1h |
| 119 | 1.5.3.2.7 | QA / Bug Fixes | milestone | 0h | 2007-08-22 16:00 | 2007-08-22 16:00 | 118 | -0.62d | 0d |  |
| 120 | 1.5.3.3 | **Search Criteria Translator** |  | 0h | 2007-08-22 10:00 | 2007-08-22 10:00 |  |  |  | 7h |
| 121 | 1.5.3.3.1 | Architecture & Design |  | 1h | 2007-08-22 10:00 | 2007-08-22 11:00 |  | -0.88d | 0d | 1h |
| 122 | 1.5.3.3.2 | Database Implementation | milestone | 0h | 2007-08-22 11:00 | 2007-08-22 11:00 | 121 | -0.88d | 0d |  |
| 123 | 1.5.3.3.3 | Implementation |  | 4h | 2007-08-22 11:00 | 2007-08-22 16:00 | 122 | -0.88d | 0d | 4h |
| 124 | 1.5.3.3.4 | Code Review | milestone | 0h | 2007-08-22 16:00 | 2007-08-22 16:00 | 123 | -0.88d | 0d |  |
| 125 | 1.5.3.3.5 | Unit Testing |  | 2h | 2007-08-22 16:00 | 2007-08-23 09:00 | 124 | -0.88d | 0d | 2h |
| 126 | 1.5.3.3.6 | Integration Testing | milestone | 0h | 2007-08-23 09:00 | 2007-08-23 09:00 | 125 | -0.88d | 0d |  |
| 127 | 1.5.3.3.7 | QA / Bug Fixes | milestone | 0h | 2007-08-23 09:00 | 2007-08-23 09:00 | 126 | -0.88d | 0d |  |

| ID | WBS | Task | Type | Duration | Start | Finish | Predecessors | Total slack | Free slack | Work |
| --- | --- | --- | --- | --- | --- | --- | --- | --- | --- | --- |
| 128 | 1.5.3.4 | **Search Result Translator** |  | 0h | 2007-08-22 10:00 | 2007-08-22 10:00 |  |  |  | 22h |
| 129 | 1.5.3.4.1 | Architecture & Design |  | 2h | 2007-08-22 10:00 | 2007-08-22 12:00 |  | -2.25d | 0d | 2h |
| 130 | 1.5.3.4.2 | Database Implementation | milestone | 0h | 2007-08-22 12:00 | 2007-08-22 12:00 | 129 | -2.25d | 0d |  |
| 131 | 1.5.3.4.3 | **Implementation** |  | 2d | 2007-08-22 13:00 | 2007-08-24 12:00 | 130 | -2.25d | 0d | 16h |
| 132 | 1.5.3.4.3.1 | Base Result |  | 4h | 2007-08-22 13:00 | 2007-08-22 17:00 |  | -2.25d | 0d | 4h |
| 133 | 1.5.3.4.3.2 | Facet Translation |  | 4h | 2007-08-23 08:00 | 2007-08-23 12:00 | 132 | -2.25d | 0d | 4h |
| 134 | 1.5.3.4.3.3 | Breadcrumb Translation |  | 4h | 2007-08-23 13:00 | 2007-08-23 17:00 | 133 | -2.25d | 0d | 4h |
| 135 | 1.5.3.4.3.4 | AutoCorrect Behavior Logic |  | 1.5h | 2007-08-24 08:00 | 2007-08-24 09:30 | 134 | -2.25d | 0d | 1.5h |
| 136 | 1.5.3.4.3.5 | Browse Refinement Logic |  | 2.5h | 2007-08-24 09:30 | 2007-08-24 12:00 | 135 | -2.25d | 0d | 2.5h |
| 137 | 1.5.3.4.4 | Code Review | milestone | 0h | 2007-08-22 10:00 | 2007-08-22 10:00 |  | -0.5d | 0d |  |
| 138 | 1.5.3.4.5 | Unit Testing |  | 4h | 2007-08-22 10:00 | 2007-08-22 15:00 | 137 | -0.5d | 0d | 4h |
| 139 | 1.5.3.4.6 | Integration Testing | milestone | 0h | 2007-08-22 15:00 | 2007-08-22 15:00 | 138 | -0.5d | 0d |  |
| 140 | 1.5.3.4.7 | QA / Bug Fixes | milestone | 0h | 2007-08-22 15:00 | 2007-08-22 15:00 | 139 | -0.5d | 0d |  |
| 141 | 1.5.3.5 | **Product Translator** |  | 0h | 2007-08-22 10:00 | 2007-08-22 10:00 |  |  |  | 6h |
| 142 | 1.5.3.5.1 | Architecture & Design |  | 1h | 2007-08-22 10:00 | 2007-08-22 11:00 |  | -0.75d | 0d | 1h |
| 143 | 1.5.3.5.2 | Database Implementation | milestone | 0h | 2007-08-22 11:00 | 2007-08-22 11:00 | 142 | -0.75d | 0d |  |
| 144 | 1.5.3.5.3 | Implementation |  | 3h | 2007-08-22 11:00 | 2007-08-22 15:00 | 143 | -0.75d | 0d | 3h |
| 145 | 1.5.3.5.4 | Code Review | milestone | 0h | 2007-08-22 15:00 | 2007-08-22 15:00 | 144 | -0.75d | 0d |  |
| 146 | 1.5.3.5.5 | Unit Testing |  | 2h | 2007-08-22 15:00 | 2007-08-22 17:00 | 145 | -0.75d | 0d | 2h |
| 147 | 1.5.3.5.6 | Integration Testing | milestone | 0h | 2007-08-22 17:00 | 2007-08-22 17:00 | 146 | -0.75d | 0d |  |
| 148 | 1.5.3.5.7 | QA / Bug Fixes | milestone | 0h | 2007-08-22 17:00 | 2007-08-22 17:00 | 147 | -0.75d | 0d |  |
| 149 | 1.5.3.6 | **Redirection Translator** |  | 0h | 2007-08-22 10:00 | 2007-08-22 10:00 |  |  |  | 4h |
| 150 | 1.5.3.6.1 | Architecture & Design |  | 1h | 2007-08-22 10:00 | 2007-08-22 11:00 |  | -0.5d | 0d | 1h |
| 151 | 1.5.3.6.2 | Database Implementation | milestone | 0h | 2007-08-22 11:00 | 2007-08-22 11:00 | 150 | -0.5d | 0d |  |
| 152 | 1.5.3.6.3 | Implementation |  | 2h | 2007-08-22 11:00 | 2007-08-22 14:00 | 151 | -0.5d | 0d | 2h |
| 153 | 1.5.3.6.4 | Code Review | milestone | 0h | 2007-08-22 14:00 | 2007-08-22 14:00 | 152 | -0.5d | 0d |  |
| 154 | 1.5.3.6.5 | Unit Testing |  | 1h | 2007-08-22 14:00 | 2007-08-22 15:00 | 153 | -0.5d | 0d | 1h |
| 155 | 1.5.3.6.6 | Integration Testing | milestone | 0h | 2007-08-22 15:00 | 2007-08-22 15:00 | 154 | -0.5d | 0d |  |
| 156 | 1.5.3.6.7 | QA / Bug Fixes | milestone | 0h | 2007-08-22 15:00 | 2007-08-22 15:00 | 155 | -0.5d | 0d |  |

| ID | WBS | Task | Type | Duration | Start | Finish | Predecessors | Total slack | Free slack | Work |
| --- | --- | --- | --- | --- | --- | --- | --- | --- | --- | --- |
| 157 | 1.6 | **Product Feed** |  | 2243.5d | 2011-12-01 08:00 | 2020-07-07 12:00 | 53, 44, 33, 17 |  |  | 11h |
| 158 | 1.6.1 | **Endeca Feed Parser** |  | 0.81d | 2011-12-01 08:00 | 2011-12-01 15:30 |  | 2242.12d | 0d | 6.5h |
| 159 | 1.6.1.1 | Architecture & Design |  | 0.5h | 2011-12-01 08:00 | 2011-12-01 08:30 |  | 2242.12d | 0d | 0.5h |
| 160 | 1.6.1.2 | Database Implementation | milestone | 0h | 2011-12-01 08:30 | 2011-12-01 08:30 | 159 | 2242.12d | 0d |  |
| 161 | 1.6.1.3 | Implementation |  | 4h | 2011-12-01 08:30 | 2011-12-01 13:30 | 160 | 2242.12d | 0d | 4h |
| 162 | 1.6.1.4 | Code Review | milestone | 0h | 2011-12-01 13:30 | 2011-12-01 13:30 | 161 | 2242.12d | 0d |  |
| 163 | 1.6.1.5 | Unit Testing |  | 2h | 2011-12-01 13:30 | 2011-12-01 15:30 | 162 | 2242.12d | 0d | 2h |
| 164 | 1.6.1.6 | Integration Testing | milestone | 0h | 2011-12-01 15:30 | 2011-12-01 15:30 | 163 | 2242.12d | 0d |  |
| 165 | 1.6.1.7 | QA / Bug Fixes | milestone | 0h | 2011-12-01 15:30 | 2011-12-01 15:30 | 164 | 2242.12d |  |  |
| 166 | 1.6.2 | **Job Wrapper** |  | 0.56d | 2011-12-01 15:30 | 2011-12-02 11:00 | 158 | 2242.12d |  | 4.5h |
| 167 | 1.6.2.1 | Architecture & Design |  | 0.5h | 2011-12-01 15:30 | 2011-12-01 16:00 |  | 2242.12d | 0d | 0.5h |
| 168 | 1.6.2.2 | Database Implementation | milestone | 0h | 2011-12-01 16:00 | 2011-12-01 16:00 | 167 | 2242.12d | 0d |  |
| 169 | 1.6.2.3 | Implementation |  | 2.5h | 2011-12-01 16:00 | 2011-12-02 09:30 | 168 | 2242.12d | 0d | 2.5h |
| 170 | 1.6.2.4 | Code Review | milestone | 0h | 2011-12-02 09:30 | 2011-12-02 09:30 | 169 | 2242.12d | 0d |  |
| 171 | 1.6.2.5 | Unit Testing |  | 1.5h | 2011-12-02 09:30 | 2011-12-02 11:00 | 170 | 2242.12d | 0d | 1.5h |
| 172 | 1.6.2.6 | Integration Testing | milestone | 0h | 2011-12-02 11:00 | 2011-12-02 11:00 | 171 | 2242.12d | 0d |  |
| 173 | 1.6.2.7 | QA / Bug Fixes | milestone | 0h | 2011-12-02 11:00 | 2011-12-02 11:00 | 172 | 2242.12d |  |  |
| 175 | 1.7 | Code Review | milestone | 0h | 2010-12-08 08:00 | 2010-12-08 08:00 |  | 3374.5d |  |  |
| 176 | 1.8 | Unit Testing |  | 12h | 2010-12-08 08:00 | 2010-12-09 12:00 |  | 3370.5d | 0d | 12h |
| 177 | 1.9 | Integration Testing |  | 8h | 2010-12-09 13:00 | 2010-12-10 12:00 | 176 | 3370.5d | 0d | 8h |
| 178 | 1.10 | QA / Bug Fixes |  | 12h | 2010-12-10 13:00 | 2010-12-13 17:00 | 177 | 3370.5d |  | 12h |
| 180 | 1.11 | **ADDITIONAL ASSUMPTIONS** |  | 8h? | 2010-12-08 08:00 | 2010-12-08 17:00 |  |  |  |  |
| 181 | 1.11.1 | **Estimate Accuracy** |  | 8h? | 2010-12-08 08:00 | 2010-12-08 17:00 |  |  |  |  |
| 182 | 1.11.1.1 | It is assumed that the tasks outlined in the discovery item of the estimate prove that the intended approach for Solr configuration and development are viable. In the event that discovery proves otherwise, this estimate should be amended to compensate. |  | 8h? | 2010-12-08 08:00 | 2010-12-08 17:00 |  | 0d |  |  |
| 183 | 1.11.1.2 | It is assumed that using Solr replication is a viable approach for refreshing the search engine content via a master instance that is then replicated to the active search nodes with no interruption in their ability to handle queries. |  | 8h? | 2010-12-08 08:00 | 2010-12-08 17:00 |  | 0d |  |  |
| 184 | 1.11.1.3 | It is assumed that the SolrNet can provide basic translation of query activities into the appropriate Solr request and parsing the response into a set of model objects. If this is not the case, additional LOE will need to be estimated for these tasks. |  | 8h? | 2010-12-08 08:00 | 2010-12-08 17:00 |  | 0d |  |  |
| 185 | 1.11.1.4 | The model for this implementation is assumed to be similar in approach and structure as the Google Commerce Search provider. It is possible that some artifacts from that implementation can be reused, lowering time on this estimate. |  | 8h? | 2010-12-08 08:00 | 2010-12-08 17:00 |  | 0d |  |  |

Notes:
- 157: ·The current Endeca extraction stored procedure will be used; no clone is needed. / ·The product set will be refreshed in full on a batch basis. / ·The product refresh will happen on a single master Solr instance and be replicated to search nodes.
- 166: This task will encompass the following steps - / ·Read redirection information from the database. / ·Parse the Endeca extract. / ·Invoke a full delete on the product set in the Solr master instance. / ·Load the redirection document into the Solr master instance. / ·Load the product document into the Solr master instance. / ·Commit the changes to the Solr master instance. / ·Trigger re-indexing and optimization.

| ID | WBS | Task | Type | Duration | Start | Finish | Total slack |
| --- | --- | --- | --- | --- | --- | --- | --- |
| 186 | 1.11.2 | **Server Environment** |  | 8h? | 2010-12-08 08:00 | 2010-12-08 17:00 |  |
| 187 | 1.11.2.1 | The implementation of the Solr search provider is being performed by a resource that has a good general familiarity with how search is used on the public site and a passing familiarity with the current Endeca implementation. |  | 8h? | 2010-12-08 08:00 | 2010-12-08 17:00 | 0d |
| 188 | 1.11.2.2 | The Solr server instances will be integrated into the existing server environment, with no additional equipment or load-balancing changes needed. |  | 8h? | 2010-12-08 08:00 | 2010-12-08 17:00 | 0d |
| 189 | 1.11.2.3 | Instances of Solr will be installed dedicated to each of the currently recognized environments - development, acceptance, and production. |  | 8h? | 2010-12-08 08:00 | 2010-12-08 17:00 | 0d |
| 190 | 1.11.2.4 | The Solr server instances will be installed to machines running Windows Server 2008 R2. |  | 8h? | 2010-12-08 08:00 | 2010-12-08 17:00 | 0d |
| 191 | 1.11.2.5 | Solr version 3.4, the current stable version at the time of this estimate, will be used. |  | 8h? | 2010-12-08 08:00 | 2010-12-08 17:00 | 0d |
| 192 | 1.11.3 | **Features** |  | 8h? | 2010-12-08 08:00 | 2010-12-08 17:00 |  |
| 193 | 1.11.3.1 | The current search term suggestions that appear beneath the search text input on the public website will continue to be driven by the same data that is currently used; they will not make use of Solr's functionality. |  | 8h? | 2010-12-08 08:00 | 2010-12-08 17:00 | 0d |
| 194 | 1.11.3.2 | Category taxonomy information does not need to be held in the Solr instance; an existing method for retrieving the category taxonomy is available for use by the Solr search provider. |  | 8h? | 2010-12-08 08:00 | 2010-12-08 17:00 | 0d |
| 195 | 1.11.3.3 | Solr offers no support for redirecting based on search terms in its core feature set; this will be simulated by using multiple document types with Solr. |  | 8h? | 2010-12-08 08:00 | 2010-12-08 17:00 | 0d |
| 196 | 1.11.4 | **Out of Scope Items** |  | 8h? | 2010-12-08 08:00 | 2010-12-08 17:00 |  |
| 197 | 1.11.4.1 | Solr includes no user-friendly GUI for administration of its general configuration. The creation of an administrative UI is out of scope for the purposes of this estimate. |  | 8h? | 2010-12-08 08:00 | 2010-12-08 17:00 | 0d |
| 198 | 1.11.4.2 | Solr offers no support for merchandising and promotions in its core feature set; these items are out of scope for the purposes of this estimate. |  | 8h? | 2010-12-08 08:00 | 2010-12-08 17:00 | 0d |
| 200 | 1.12 | **RISKS** |  | 8h? | 2010-12-08 08:00 | 2010-12-08 17:00 |  |
| 201 | 1.12.1 | Solr is a java-based product. Available resources do not have core proficiency in the technology stack. | milestone | 0h | 2010-12-08 08:00 | 2010-12-08 08:00 | 1d |
| 202 | 1.12.2 | Linux is the more commonly recommended platform for Solr hosting. This implementation has been requested to use a Windows-based environment. | milestone | 0h | 2010-12-08 08:00 | 2010-12-08 08:00 | 1d |
| 203 | 1.12.3 | The official documentation for installation, configuration, and usage are targeted at Linux-based environments. | milestone | 0h | 2010-12-08 08:00 | 2010-12-08 08:00 | 1d |
| 204 | 1.12.4 | There is an uneven level of official documentation available, often leaning towards sparse. These materials are in various states of freshness and may not apply to the current version. | milestone | 0h | 2010-12-08 08:00 | 2010-12-08 08:00 | 1d |
